# Lab4_2

Schedule from MS Project, 2025-03-03 to 2025-08-13, status date 2025-05-11, costs in ₽, A marks actual dates.
Длительность: 6 месяцев, бюджет 50 тысяч, 16 человек в команде

## Calendars

- Стандартный: Mon-Fri 09:00-13:00, 14:00-18:00; Sat-Sun off. Exceptions (off unless hours are given): 2025-03-07 09:00-13:00, 14:00-17:00 (Предпразничный день), 2025-04-30 09:00-13:00, 14:00-17:00 (Предпраздничный день), 2025-05-01 to 2025-05-02 (Праздник Весны и Труда), 2025-05-08 to 2025-05-09 (День Победы), 2025-06-11 09:00-13:00, 14:00-17:00 (Предпраздничный день), 2025-06-12 to 2025-06-13 (День России).

## Resources

| Resource | Group | Rate | Cost per use |
| --- | --- | --- | --- |
| Ведущий программист | Программирование | 10 | 100 |
| Программист#1 | Программирование | 7 | 50 |
| Программист#2 | Программирование | 7 | 50 |
| Программист#3 | Программирование | 7 | 50 |
| Программист#4 | Программирование | 7 | 50 |
| Системный аналитик | Анализ | 20 | 300 |
| Художник-дизайнер | Дизайн | 8 | 70 |
| Технический писатель | Документация | 5 | 20 |
| Web-дизайнер | Internet | 7 | 50 |
| 3D аниматор | Дизайн | 8 | 70 |
| Мультимедиа-корреспондент | М-медиа | 3 | 20 |
| Наборщик данных#1 | Ввод данных | 2 | 10 |
| Наборщик данных#2 | Ввод данных | 2 | 10 |
| Наборщик данных#3 | Ввод данных | 2 | 10 |
| Наборщик данных#4 | Ввод данных | 2 | 10 |
| Наборщик данных#5 | Ввод данных | 2 | 10 |
| Сервер | Оборудование | 2 |  |
| Свой сервер | Оборудование | 4000 |  |

## Schedule

| ID | WBS | Task | Type | Duration | Start | Finish | Predecessors | Complete | Remaining | Baseline start | Baseline finish | Baseline duration | Total slack | Constraint | Resources | Work | Actual work | Cost | Baseline cost | Actual cost |
| --- | --- | --- | --- | --- | --- | --- | --- | --- | --- | --- | --- | --- | --- | --- | --- | --- | --- | --- | --- | --- |
| 1 | 1 | **Совещание** |  | 103.75d | 2025-03-05 09:00 A | 2025-08-06 10:00 |  | 50% | 51.88d | 2025-03-05 09:00 | 2025-08-06 18:00 | 104.62d | 4.94d |  |  | 76h | 41h | 678 | 1,403 | 363 |
| 2 | 1.1 | Совещание 1 |  | 1h | 2025-03-05 09:00 A | 2025-03-05 10:00 A |  | 100% |  | 2025-03-05 09:00 | 2025-03-06 13:00 | 12h |  | start no earlier than 2025-03-05 09:00 | 3D аниматор; Web-дизайнер; Ведущий программист; Мультимедиа-корреспондент; Системный аналитик; Технический писатель; Художник-дизайнер | 7h | 7h | 61 | 61 | 61 |
| 3 | 1.2 | Совещание 2 |  | 1h | 2025-03-12 09:00 A | 2025-03-12 10:00 A |  | 100% |  | 2025-03-12 09:00 | 2025-03-12 10:00 | 1h |  | start no earlier than 2025-03-12 09:00 | Web-дизайнер; Ведущий программист; Мультимедиа-корреспондент; Системный аналитик; Технический писатель; Художник-дизайнер | 6h | 6h | 53 | 61 | 53 |
| 4 | 1.3 | Совещание 3 |  | 1h | 2025-03-19 09:00 A | 2025-03-19 10:00 A |  | 100% |  | 2025-03-19 09:00 | 2025-03-19 10:00 | 1h |  | start no earlier than 2025-03-19 09:00 | Web-дизайнер; Ведущий программист; Мультимедиа-корреспондент; Системный аналитик; Технический писатель; Художник-дизайнер | 6h | 6h | 53 | 61 | 53 |
| 5 | 1.4 | Совещание 4 |  | 1h | 2025-03-26 09:00 A | 2025-03-26 10:00 A |  | 100% |  | 2025-03-26 09:00 | 2025-03-26 10:00 | 1h |  | start no earlier than 2025-03-26 09:00 | 3D аниматор; Web-дизайнер; Ведущий программист; Мультимедиа-корреспондент; Системный аналитик; Технический писатель; Художник-дизайнер | 7h | 7h | 61 | 61 | 61 |
| 6 | 1.5 | **Обновленное совещание** |  | 83.88d | 2025-04-02 09:00 A | 2025-08-06 10:00 |  | 30% | 58.71d |  |  |  | 4.94d |  |  | 50h | 15h | 450 |  | 135 |
| 7 | 1.5.1 | Обновленное совещание 1 |  | 1h | 2025-04-02 09:00 A | 2025-04-02 10:00 A |  | 100% |  |  |  |  |  | start no earlier than 2025-04-02 09:00 | Web-дизайнер; Ведущий программист; Мультимедиа-корреспондент; Системный аналитик; Технический писатель | 5h | 5h | 45 |  | 45 |
| 8 | 1.5.2 | Обновленное совещание 2 |  | 1h | 2025-04-16 09:00 A | 2025-04-16 10:00 A |  | 100% |  |  |  |  |  | start no earlier than 2025-04-16 09:00 | Web-дизайнер; Ведущий программист; Мультимедиа-корреспондент; Системный аналитик; Технический писатель | 5h | 5h | 45 |  | 45 |
| 9 | 1.5.3 | Обновленное совещание 3 |  | 1h | 2025-04-30 09:00 A | 2025-04-30 10:00 A |  | 100% |  |  |  |  |  | start no earlier than 2025-04-30 09:00 | Web-дизайнер; Ведущий программист; Мультимедиа-корреспондент; Системный аналитик; Технический писатель | 5h | 5h | 45 |  | 45 |
| 10 | 1.5.4 | Обновленное совещание 4 |  | 1h | 2025-05-14 09:00 | 2025-05-14 10:00 |  |  |  |  |  |  | 62.81d | start no earlier than 2025-05-14 09:00 | Web-дизайнер; Ведущий программист; Мультимедиа-корреспондент; Системный аналитик; Технический писатель | 5h |  | 45 |  |  |
| 11 | 1.5.5 | Обновленное совещание 5 |  | 1h | 2025-05-28 09:00 | 2025-05-28 10:00 |  |  |  |  |  |  | 52.81d | start no earlier than 2025-05-28 09:00 | Web-дизайнер; Ведущий программист; Мультимедиа-корреспондент; Системный аналитик; Технический писатель | 5h |  | 45 |  |  |
| 12 | 1.5.6 | Обновленное совещание 6 |  | 1h | 2025-06-11 09:00 | 2025-06-11 10:00 |  |  |  |  |  |  | 42.81d | start no earlier than 2025-06-11 09:00 | Web-дизайнер; Ведущий программист; Мультимедиа-корреспондент; Системный аналитик; Технический писатель | 5h |  | 45 |  |  |
| 13 | 1.5.7 | Обновленное совещание 7 |  | 1h | 2025-06-25 09:00 | 2025-06-25 10:00 |  |  |  |  |  |  | 34.94d | start no earlier than 2025-06-25 09:00 | Web-дизайнер; Ведущий программист; Мультимедиа-корреспондент; Системный аналитик; Технический писатель | 5h |  | 45 |  |  |
| 14 | 1.5.8 | Обновленное совещание 8 |  | 1h | 2025-07-09 09:00 | 2025-07-09 10:00 |  |  |  |  |  |  | 24.94d | start no earlier than 2025-07-09 09:00 | Web-дизайнер; Ведущий программист; Мультимедиа-корреспондент; Системный аналитик; Технический писатель | 5h |  | 45 |  |  |
| 15 | 1.5.9 | Обновленное совещание 9 |  | 1h | 2025-07-23 09:00 | 2025-07-23 10:00 |  |  |  |  |  |  | 14.94d | start no earlier than 2025-07-23 09:00 | Web-дизайнер; Ведущий программист; Мультимедиа-корреспондент; Системный аналитик; Технический писатель | 5h |  | 45 |  |  |
| 16 | 1.5.10 | Обновленное совещание 10 |  | 1h | 2025-08-06 09:00 | 2025-08-06 10:00 |  |  |  |  |  |  | 4.94d | start no earlier than 2025-08-06 09:00 | Web-дизайнер; Ведущий программист; Мультимедиа-корреспондент; Системный аналитик; Технический писатель | 5h |  | 45 |  |  |
| 17 | 2 | Начало проекта | milestone | 0d | 2025-03-03 09:00 A | 2025-03-03 09:00 A |  | 100% |  | 2025-03-03 09:00 | 2025-03-03 09:00 | 0d |  |  |  |  |  |  |  |  |
| 18 | 3 | **Создание интерфейса** |  | 86.98d | 2025-03-03 09:00 A | 2025-07-10 11:50 | 17 | 71% | 24.98d | 2025-03-03 09:00 | 2025-07-09 17:55 | 86.61d | 0d |  |  | 484.4h | 244.4h | 5,019.76 | 5,550 | 2,949.76 |
| 19 | 3.1 | **Разработка дизайна интерфейса** |  | 30.36d | 2025-03-03 09:00 A | 2025-04-14 12:51 A |  | 100% |  | 2025-03-03 09:00 | 2025-04-08 11:00 | 26.12d |  |  |  | 244.4h | 244.4h | 2,239.76 | 2,770 | 2,239.76 |
| 20 | 3.1.1 | Разработка 2D графических элементов |  | 3w | 2025-03-03 09:00 A | 2025-03-26 15:00 A |  | 100% |  | 2025-03-03 09:00 | 2025-03-24 18:00 | 3w |  | finish no earlier than 2025-03-24 18:00 | Художник-дизайнер | 89.6h | 89.6h | 805.04 | 1,030 | 805.04 |
| 21 | 3.1.2 | Разработка 3D графических элементов |  | 1.45w | 2025-03-03 09:00 A | 2025-03-19 18:00 A | 20SS | 100% |  | 2025-03-03 09:00 | 2025-03-17 17:00 | 2w |  |  | 3D аниматор; Художник-дизайнер [40%] | 34.8h | 34.8h | 376.72 | 710 | 376.72 |
| 22 | 3.1.3 | Создание заставки |  | 3w | 2025-03-20 09:00 A | 2025-04-14 12:51 A | 21 | 100% |  | 2025-03-17 17:00 | 2025-04-08 11:00 | 3w |  | start no earlier than 2025-03-20 09:00 | 3D аниматор; Художник-дизайнер [40%] | 120h | 120h | 1,058 | 1,030 | 1,058 |
| 23 | 3.2 | Программирование интерфейса |  | 3w | 2025-06-19 11:50 | 2025-07-10 11:50 | 19, 28 |  |  | 2025-06-18 17:55 | 2025-07-09 17:55 | 3w | 0d |  | Программист#3; Программист#4 | 240h |  | 1,780 | 1,780 |  |
| 24 | 4 | **Построение базы объектов** |  | 90.25d | 2025-03-25 09:00 A | 2025-08-06 13:00 |  | 33% | 60.17d | 2025-03-25 09:00 | 2025-07-30 13:00 | 85.25d | 4.56d |  | Сервер; Свой сервер | 2873h | 473h | 13,836 | 15,634 | 4,316 |
| 25 | 4.1 | Анализ и построение структуры базы объектов |  | 2.4w | 2025-03-25 09:00 A | 2025-04-10 11:00 A |  | 100% |  | 2025-03-25 09:00 | 2025-04-08 11:00 | 2w |  |  | Системный аналитик | 80h | 80h | 1,900 | 1,900 | 1,900 |
| 26 | 4.2 | Программирование средств обработки базы объектов |  | 3.6w | 2025-04-10 11:00 A | 2025-05-12 12:00 A | 25 | 100% |  | 2025-04-08 11:00 | 2025-04-29 11:00 | 3w |  |  | Программист#3; Программист#4 | 240h | 240h | 1,780 | 1,780 | 1,780 |
| 27 | 4.3 | Наполнение базы объектов |  | 12w | 2025-05-12 12:00 | 2025-08-06 13:00 | 26 |  |  | 2025-04-29 11:00 | 2025-07-30 13:00 | 12w | 4.56d |  | Наборщик данных#1; Наборщик данных#2; Наборщик данных#3; Наборщик данных#4; Наборщик данных#5 | 2400h |  | 4,850 | 4,850 |  |

| ID | WBS | Task | Type | Duration | Start | Finish | Predecessors | Complete | Remaining | Baseline start | Baseline finish | Baseline duration | Total slack | Resources | Work | Actual work | Cost | Baseline cost | Actual cost |
| --- | --- | --- | --- | --- | --- | --- | --- | --- | --- | --- | --- | --- | --- | --- | --- | --- | --- | --- | --- |
| 28 | 5 | **Создание ядра GIS** |  | 71.98d | 2025-03-03 09:00 A | 2025-06-19 11:50 |  | 63% | 26.55d | 2025-03-03 09:00 | 2025-06-18 17:55 | 71.61d | 0d |  | 1880h | 939.31h | 18,138.86 | 18,138.86 | 10,651.15 |
| 29 | 5.1 | Анализ и проектирование ядра |  | 3w | 2025-03-03 09:00 A | 2025-03-24 18:00 A |  | 100% |  | 2025-03-03 09:00 | 2025-03-24 18:00 | 3w |  | Ведущий программист; Системный аналитик | 240h | 240h | 4,000 | 4,000 | 4,000 |
| 30 | 5.2 | Создание модели ядра |  | 3.41w | 2025-03-25 09:00 A | 2025-04-17 09:13 A | 29 | 100% |  | 2025-03-25 09:00 | 2025-04-17 09:13 | 3.41w |  | Ведущий программист; Программист#1; Программист#2 | 400h | 400h | 3,396.7 | 3,396.7 | 3,396.7 |
| 31 | 5.3 | Тестирование модели ядра |  | 1w | 2025-04-17 09:13 A | 2025-04-24 09:13 A | 30 | 100% |  | 2025-04-17 09:13 | 2025-04-24 09:13 | 1w |  | Программист#1 | 40h | 40h | 330 | 330 | 330 |
| 32 | 5.4 | Создание рабочей версии ядра |  | 6.82w | 2025-04-24 09:13 A | 2025-06-19 11:50 | 31 | 23% | 5.25w | 2025-04-24 09:13 | 2025-06-18 17:55 | 6.74w | 0d | Ведущий программист; Программист#1; Программист#2; Программист#3; Программист#4 | 1200h | 259.31h | 9,412.16 | 9,412.16 | 2,294.45 |
| 33 | 6 | Создание мультимедиа – наполнения |  | 6w | 2025-04-14 12:51 A | 2025-06-05 11:51 | 19 | 45% | 3.32w | 2025-04-08 11:00 | 2025-05-27 11:00 | 6w | 46.58d | Мультимедиа-корреспондент | 240h | 107.14h | 740 | 740 | 341.4 |
| 34 | 7 | Создание справочной системы |  | 2w | 2025-07-23 10:00 | 2025-08-06 13:00 | 23 |  |  | 2025-07-22 09:31 | 2025-08-05 12:31 | 2w | 4.56d | Технический писатель | 80h |  | 420 | 420 |  |
| 35 | 8 | **Создание руководства пользователя** |  | 18.08d | 2025-06-26 11:50 | 2025-07-22 12:26 | 23FS-10d |  |  | 2025-06-25 17:55 | 2025-07-22 09:31 | 18.08d | 0d |  | 160h |  | 1,010 | 1,010 |  |
| 36 | 8.1 | Разработка дизайна руководства |  | 1w | 2025-06-26 11:50 | 2025-07-03 15:50 |  |  |  | 2025-06-25 17:55 | 2025-07-03 11:55 | 1w | 0d | Художник-дизайнер | 40h |  | 390 | 390 |  |
| 37 | 8.2 | Написание руководства пользователя |  | 3w | 2025-06-30 11:50 | 2025-07-22 12:26 | 36SS+2d |  |  | 2025-06-27 17:55 | 2025-07-22 09:31 | 3w | 0d | Технический писатель | 120h |  | 620 | 620 |  |
| 38 | 9 | **Создание web – сайта и поддержка** |  | 24.39d | 2025-06-30 11:50 | 2025-08-01 15:55 |  |  |  | 2025-06-27 17:55 | 2025-08-01 12:00 | 24.39d | 0d |  | 248h |  | 2,106 | 2,106 |  |
| 39 | 9.1 | Разработка структуры сайта |  | 1d | 2025-06-30 11:50 | 2025-07-01 11:50 | 37SS |  |  | 2025-06-27 17:55 | 2025-06-30 17:55 | 1d | 0d | Web-дизайнер | 8h |  | 106 | 106 |  |
| 40 | 9.2 | Разработка дизайна сайта |  | 1.4w | 2025-07-01 11:50 | 2025-07-11 09:50 | 39 |  |  | 2025-06-30 17:55 | 2025-07-10 15:55 | 1.4w | 0d | Web-дизайнер; 3D аниматор; Художник-дизайнер | 120h |  | 1,110 | 1,110 |  |
| 41 | 9.3 | Наполнение сайта |  | 3w | 2025-07-11 09:50 | 2025-08-01 15:55 | 40 |  |  | 2025-07-10 15:55 | 2025-08-01 12:00 | 3w | 0d | Web-дизайнер | 120h |  | 890 | 890 |  |
| 42 | 10 | Тестирование сайта |  | 2.46w | 2025-07-25 15:55 | 2025-08-13 09:29 | 38FS-1w |  |  | 2025-07-25 12:00 | 2025-08-12 15:34 | 2.46w | 0d | Ведущий программист; Программист#1; Программист#2; Программист#3; Программист#4 | 480h |  | 3,943.75 | 3,943.75 |  |
| 43 | 11 | Сдача сайта в эксплуатацию | milestone | 0d | 2025-08-13 09:29 | 2025-08-13 09:29 | 42 |  |  | 2025-08-12 15:34 | 2025-08-12 15:34 | 0d | 0d |  |  |  |  |  |  |
