# Проект1_task4

Schedule from MS Project, 2025-03-03 to 2025-08-19, costs in ₽.
Состав команды: 16 разработчиков / Бюджет проекта: 50000 рублей / Длительность: 6 месяцев

## Calendars

- Стандартный: Mon-Fri 09:00-13:00, 14:00-18:00; Sat-Sun off. Exceptions (off unless hours are given): 2025-03-07 09:00-13:00, 14:00-17:00 (Мартовский укороченный день), 2025-04-30 09:00-13:00, 14:00-17:00 (Предмайский укороченный день), 2025-05-01 to 2025-05-02 (Первые майские праздники), 2025-05-08 to 2025-05-09 (Вторые майские праздники), 2025-06-11 09:00-13:00, 14:00-17:00 (Июньский укороченный день), 2025-06-12 to 2025-06-13 (День России).

## Resources

| Resource | Group | Rate | Cost per use |
| --- | --- | --- | --- |
| Ведущий программист | Программирование | 10 | 100 |
| Программист#1 | Программирование | 7 | 50 |
| Программист#2 | Программирование | 7 | 50 |
| Программист#3 | Программирование | 7 | 50 |
| Программист#4 | Программирование | 7 | 50 |
| Системный аналитик | Анализ | 20 | 300 |
| Художник-дизайнер | Дизайн | 8 | 70 |
| Технический писатель | Документация | 5 | 20 |
| Web-дизайнер | Internet | 7 | 50 |
| 3D аниматор | Дизайн | 8 | 70 |
| Мультимедиа-корреспондент | М-медиа | 3 | 20 |
| Наборщик данных#1 | Ввод данных | 2 | 10 |
| Наборщик данных#2 | Ввод данных | 2 | 10 |
| Наборщик данных#3 | Ввод данных | 2 | 10 |
| Наборщик данных#4 | Ввод данных | 2 | 10 |
| Наборщик данных#5 | Ввод данных | 2 | 10 |
| Сервер | Оборудование | 2 |  |

## Schedule

| ID | WBS | Task | Type | Duration | Start | Finish | Predecessors | Total slack | Free slack | Resources | Work | Cost |
| --- | --- | --- | --- | --- | --- | --- | --- | --- | --- | --- | --- | --- |
| 1 | 1 | Начало проекта | milestone | 0d | 2025-03-03 | 2025-03-03 |  | 0d |  |  |  |  |
| 2 | 2 | **Проектирование** |  | 15d | 2025-03-03 | 2025-03-24 |  | 0d |  |  | 657h | 7,574 |
| 3 | 2.1 | Анализ и построение структуры базы объектов |  | 2w | 2025-03-03 | 2025-03-17 | 1 | 25.88d | 0d | Системный аналитик; Сервер | 417h | 2,574 |
| 4 | 2.2 | Анализ и проектирование ядра |  | 3w | 2025-03-03 | 2025-03-24 | 1 | 0d |  | Ведущий программист; Системный аналитик | 240h | 4,000 |
| 5 | 3 | **Разработка** |  | 95d | 2025-03-03 | 2025-07-22 |  | 0d |  |  | 8002h | 34,804 |
| 6 | 3.1 | **Дизайн** |  | 5w | 2025-03-03 | 2025-04-07 |  |  |  |  | 448h | 4,986 |
| 7 | 3.1.1 | **Разработка дизайна интерфейса** |  | 25d | 2025-03-03 | 2025-04-07 |  | 55d | 0d |  | 320h | 2,770 |
| 8 | 3.1.1.1 | Разработка 2D графических элементов |  | 3w | 2025-03-03 | 2025-03-24 | 1 | 55d | 0d | Художник-дизайнер | 120h | 1,030 |
| 9 | 3.1.1.2 | Разработка 3D графических элементов |  | 2w | 2025-03-03 | 2025-03-17 | 8SS | 55d | 0d | 3D аниматор | 80h | 710 |
| 10 | 3.1.1.3 | Создание заставки |  | 3w | 2025-03-17 | 2025-04-07 | 9 | 55d |  | 3D аниматор | 120h | 1,030 |
| 11 | 3.1.2 | Разработка структуры сайта |  | 1d | 2025-03-03 | 2025-03-03 | 1 | 74d | 0d | Web-дизайнер | 8h | 106 |
| 12 | 3.1.3 | Разработка дизайна сайта |  | 1w | 2025-03-04 | 2025-03-11 | 11 | 74d | 0d | 3D аниматор; Web-дизайнер; Художник-дизайнер | 120h | 1,110 |
| 13 | 3.2 | **Кодирование** |  | 85d | 2025-03-17 | 2025-07-22 |  | 0d |  |  | 2584h | 18,918 |
| 14 | 3.2.1 | Программирование интерфейса |  | 3w | 2025-04-28 | 2025-05-23 | 7, 16 | 40d | 0d | Программист#3; Программист#4 | 240h | 1,780 |
| 15 | 3.2.2 | Программирование средств обработки базы объектов |  | 3w | 2025-03-17 | 2025-04-07 | 3 | 25.88d | 0d | Программист#3; Программист#4; Сервер | 744h | 2,788 |
| 16 | 3.2.3 | Создание модели ядра |  | 5w | 2025-03-24 | 2025-04-28 | 4 | 0d |  | Ведущий программист; Программист#1 | 400h | 3,550 |
| 17 | 3.2.4 | Создание рабочей версии ядра |  | 10w | 2025-05-07 | 2025-07-22 | 23 | 0d |  | Ведущий программист; Программист#1; Программист#2 | 1200h | 9,800 |
| 18 | 3.3 | **Наполнение** |  | 79d | 2025-03-11 | 2025-07-08 |  | 30d |  |  | 4970h | 10,900 |
| 19 | 3.3.1 | Наполнение базы объектов |  | 12w | 2025-04-07 | 2025-07-08 | 15 | 25.88d |  | Наборщик данных#1; Наборщик данных#2; Наборщик данных#3; Наборщик данных#4; Наборщик данных#5; Сервер | 4610h | 9,270 |
| 20 | 3.3.2 | Создание мультимедиа – наполнения |  | 6w | 2025-04-07 | 2025-05-23 | 7 | 60d |  | Мультимедиа-корреспондент | 240h | 740 |
| 21 | 3.3.3 | Наполнение сайта |  | 3w | 2025-03-11 | 2025-04-01 | 12 | 74d |  | Web-дизайнер | 120h | 890 |
| 22 | 4 | **Тестирование** |  | 75d | 2025-04-28 | 2025-08-19 |  | 0d |  |  | 520h | 4,370 |
| 23 | 4.1 | Тестирование модели ядра |  | 1w | 2025-04-28 | 2025-05-07 | 16 | 0d |  | Программист#1 | 40h | 330 |
| 24 | 4.2 | Тестирование сайта |  | 4w | 2025-07-22 | 2025-08-19 | 14, 17, 21 | 0d |  | Ведущий программист; Программист#1; Программист#2 | 480h | 4,040 |

| ID | WBS | Task | Type | Duration | Start | Finish | Predecessors | Total slack | Free slack | Resources | Work | Cost |
| --- | --- | --- | --- | --- | --- | --- | --- | --- | --- | --- | --- | --- |
| 25 | 5 | **Написание документации** |  | 17d | 2025-05-23 | 2025-06-19 |  | 43d |  |  | 240h | 1,430 |
| 26 | 5.1 | Создание справочной системы |  | 2w | 2025-05-23 | 2025-06-06 | 14 | 50d |  | Технический писатель | 80h | 420 |
| 27 | 5.2 | **Создание руководства пользователя** |  | 17d | 2025-05-23 | 2025-06-19 | 14 | 43d |  |  | 160h | 1,010 |
| 28 | 5.2.1 | Разработка дизайна руководства |  | 1w | 2025-05-23 | 2025-05-30 |  | 43d | 0d | Художник-дизайнер | 40h | 390 |
| 29 | 5.2.2 | Написание руководства пользователя |  | 3w | 2025-05-27 | 2025-06-19 | 28SS+2d | 43d |  | Технический писатель | 120h | 620 |
| 30 | 6 | Сдача сайта в эксплуатацию | milestone | 0w | 2025-08-19 | 2025-08-19 | 24 | 0d |  |  |  |  |
