# rk_9

Schedule from MS Project, 2025-04-07 to 2025-07-29, costs in ₽.

## Calendars

- Стандартный: Mon-Fri 09:00-13:00, 14:00-18:00; Sat-Sun off. Exceptions (off unless hours are given): 2025-04-15 to 2025-08-06 12:00-13:00, 14:00-18:00 (Часы профилактики, recurring), 2025-04-30 09:00-13:00, 14:00-17:00 (Укороченный день перед 1 мая), 2025-05-01 to 2025-05-02 (Первые майские праздники), 2025-05-08 to 2025-05-09 (Вторые майские праздники), 2025-06-11 09:00-13:00, 14:00-17:00 (Укороченный день перед Днем России), 2025-06-12 to 2025-06-13 (День России).
- Профилактика: Mon-Fri 09:00-13:00, 14:00-18:00; Sat-Sun off. Exceptions (off unless hours are given): 2025-04-30 09:00-13:00, 14:00-17:00 (Укороченный день перед 1 мая), 2025-05-01 to 2025-05-02 (Первые майские праздники), 2025-05-08 to 2025-05-09 (Вторые майские праздники), 2025-06-11 09:00-13:00, 14:00-17:00 (Укороченный день перед Днем России), 2025-06-12 to 2025-06-13 (День России).

## Resources

| Resource | Group | Unit | Rate | Cost per use |
| --- | --- | --- | --- | --- |
| Аналитик |  |  | 500 | 5000 |
| Ведущий программист | Программисты |  | 437.5 | 3000 |
| Программист 1 | Программисты |  | 312.5 | 2000 |
| Программист 2 | Программисты |  | 312.5 | 2000 |
| Программист 3 | Программисты |  | 312.5 | 2000 |
| Технический писатель |  |  | 250 | 1500 |
| Наборщики данных | Технический персонал |  | 218.75 | 1000 |
| Сервер базы данных | Оборудование |  | 25000 | 10000 |
| Картриджи для принтера | Расходные материалы | шт | 2500 |  |
| Бумага | Расходные материалы | пач | 200 |  |
| Специалист для профилактики |  |  | 3000 |  |

## Schedule

| ID | WBS | Task | Type | Duration | Start | Finish | Predecessors | Baseline start | Baseline finish | Baseline duration | Total slack | Free slack | Constraint | Calendar | Resources | Work | Cost | Baseline cost |
| --- | --- | --- | --- | --- | --- | --- | --- | --- | --- | --- | --- | --- | --- | --- | --- | --- | --- | --- |
| 1 | 1 | **Проект РК** |  | 72.64d | 2025-04-07 09:00 | 2025-07-29 17:08 |  | 2025-04-07 09:00 | 2025-07-29 17:08 | 72.64d | 0d |  |  |  |  | 1456h | 594,464.29 | 594,464.29 |
| 2 | 1.1 | **Профилактика оборудования** |  | 64.12d | 2025-04-15 09:00 | 2025-07-22 12:00 |  | 2025-04-15 09:00 | 2025-07-22 12:00 | 64.12d | 5.52d |  |  | Профилактика |  |  | 24,000 | 24,000 |
| 3 | 1.1.1 | Профилактика оборудования 1 |  | 3h | 2025-04-15 09:00 | 2025-04-15 12:00 |  | 2025-04-15 09:00 | 2025-04-15 12:00 | 3h | 69.27d |  | start no earlier than 2025-04-15 09:00 | Профилактика | Специалист для профилактики |  | 3,000 | 3,000 |
| 4 | 1.1.2 | Профилактика оборудования 2 |  | 3h | 2025-04-29 09:00 | 2025-04-29 12:00 |  | 2025-04-29 09:00 | 2025-04-29 12:00 | 3h | 59.27d |  | start no earlier than 2025-04-29 09:00 | Профилактика | Специалист для профилактики |  | 3,000 | 3,000 |
| 5 | 1.1.3 | Профилактика оборудования 3 |  | 3h | 2025-05-13 09:00 | 2025-05-13 12:00 |  | 2025-05-13 09:00 | 2025-05-13 12:00 | 3h | 53.39d |  | start no earlier than 2025-05-13 09:00 | Профилактика | Специалист для профилактики |  | 3,000 | 3,000 |
| 6 | 1.1.4 | Профилактика оборудования 4 |  | 3h | 2025-05-27 09:00 | 2025-05-27 12:00 |  | 2025-05-27 09:00 | 2025-05-27 12:00 | 3h | 43.39d |  | start no earlier than 2025-05-27 09:00 | Профилактика | Специалист для профилактики |  | 3,000 | 3,000 |
| 7 | 1.1.5 | Профилактика оборудования 5 |  | 3h | 2025-06-10 09:00 | 2025-06-10 12:00 |  | 2025-06-10 09:00 | 2025-06-10 12:00 | 3h | 33.39d |  | start no earlier than 2025-06-10 09:00 | Профилактика | Специалист для профилактики |  | 3,000 | 3,000 |
| 8 | 1.1.6 | Профилактика оборудования 6 |  | 3h | 2025-06-24 09:00 | 2025-06-24 12:00 |  | 2025-06-24 09:00 | 2025-06-24 12:00 | 3h | 25.52d |  | start no earlier than 2025-06-24 09:00 | Профилактика | Специалист для профилактики |  | 3,000 | 3,000 |
| 9 | 1.1.7 | Профилактика оборудования 7 |  | 3h | 2025-07-08 09:00 | 2025-07-08 12:00 |  | 2025-07-08 09:00 | 2025-07-08 12:00 | 3h | 15.52d |  | start no earlier than 2025-07-08 09:00 | Профилактика | Специалист для профилактики |  | 3,000 | 3,000 |
| 10 | 1.1.8 | Профилактика оборудования 8 |  | 3h | 2025-07-22 09:00 | 2025-07-22 12:00 |  | 2025-07-22 09:00 | 2025-07-22 12:00 | 3h | 5.52d |  | start no earlier than 2025-07-22 09:00 | Профилактика | Специалист для профилактики |  | 3,000 | 3,000 |
| 11 | 1.2 | Начало реализации проекта | milestone | 0d | 2025-04-07 09:00 | 2025-04-07 09:00 |  | 2025-04-07 09:00 | 2025-04-07 09:00 | 0d | 0d |  |  |  |  |  |  |  |
| 12 | 1.3 | **Программирование** |  | 36.64d | 2025-04-08 09:00 | 2025-06-05 11:08 |  | 2025-04-08 09:00 | 2025-06-05 11:08 | 36.64d | 0d |  |  |  | Сервер базы данных | 936h | 385,964.29 | 385,964.29 |
| 13 | 1.3.1 | Постановка задачи |  | 5d | 2025-04-08 09:00 | 2025-04-14 18:00 | 11FS+1d | 2025-04-08 09:00 | 2025-04-14 18:00 | 5d | 0d |  |  |  | Аналитик; Ведущий программист | 80h | 45,500 | 45,500 |
| 14 | 1.3.2 | Разработка интерфейса |  | 10d | 2025-04-15 12:00 | 2025-04-29 16:00 | 13 | 2025-04-15 12:00 | 2025-04-29 16:00 | 10d | 0.95d | 0d |  |  | Ведущий программист; Программист 1 | 160h | 65,000 | 65,000 |
| 15 | 1.3.3 | Разработка модулей обработки данных |  | 16.07d | 2025-05-12 17:00 | 2025-06-04 15:34 | 14 | 2025-05-12 17:00 | 2025-06-04 15:34 | 16.07d | 0.57d |  |  |  | Программист 2; Программист 3 | 240h | 79,000 | 79,000 |
| 16 | 1.3.4 | Разработка базы данных |  | 19.64d | 2025-04-15 12:00 | 2025-05-19 17:08 | 13 | 2025-04-15 12:00 | 2025-05-19 17:08 | 19.64d | 0d |  |  |  | Аналитик; Программист 1; Программист 2; Программист 3 | 360h | 137,964.29 | 137,964.29 |
| 17 | 1.3.5 | Заполнение базы данных |  | 12d | 2025-05-19 17:08 | 2025-06-05 11:08 | 16 | 2025-05-19 17:08 | 2025-06-05 11:08 | 12d | 0d |  |  |  | Наборщики данных | 96h | 22,000 | 22,000 |
| 18 | 1.4 | Программирование завершено | milestone | 0d | 2025-06-05 11:08 | 2025-06-05 11:08 | 15, 17 | 2025-06-05 11:08 | 2025-06-05 11:08 | 0d | 0d |  |  |  |  |  |  |  |
| 19 | 1.5 | **Тестирование и отладка** |  | 24.43d | 2025-05-29 11:08 | 2025-07-07 14:34 |  | 2025-05-29 11:08 | 2025-07-07 14:34 | 24.43d | 15.57d |  |  |  |  | 320h | 125,000 | 125,000 |
| 20 | 1.5.1 | Подготовка тестовых наборов данных |  | 9.43d | 2025-05-29 11:08 | 2025-06-16 10:34 | 18FS-5d | 2025-05-29 11:08 | 2025-06-16 10:34 | 9.43d | 15.57d | 0d |  |  | Программист 1; Программист 3 | 80h | 29,000 | 29,000 |
| 21 | 1.5.2 | Тестирование и исправление ошибок |  | 15d | 2025-06-16 10:34 | 2025-07-07 14:34 | 20 | 2025-06-16 10:34 | 2025-07-07 14:34 | 15d | 15.57d | 0d |  |  | Ведущий программист; Программист 2 | 240h | 95,000 | 95,000 |
| 22 | 1.6 | Отладка завершена | milestone | 0d | 2025-07-07 14:34 | 2025-07-07 14:34 | 21 | 2025-07-07 14:34 | 2025-07-07 14:34 | 0d | 15.57d |  |  |  |  |  |  |  |
| 23 | 1.7 | **Разработка документации** |  | 25d | 2025-06-23 16:08 | 2025-07-29 17:08 |  | 2025-06-23 16:08 | 2025-07-29 17:08 | 25d | 0d |  |  |  | Бумага [0.01 пач]; Картриджи для принтера [0.01 шт] | 200h | 59,500 | 59,500 |
| 24 | 1.7.1 | Составление программной документации |  | 10d | 2025-06-23 16:08 | 2025-07-08 14:08 | 18SS+10d | 2025-06-23 16:08 | 2025-07-08 14:08 | 10d | 0d |  |  |  | Технический писатель | 80h | 21,500 | 21,500 |
| 25 | 1.7.2 | Составление пользовательской документации |  | 15d | 2025-07-08 14:08 | 2025-07-29 17:08 | 24 | 2025-07-08 14:08 | 2025-07-29 17:08 | 15d | 0d |  |  |  | Технический писатель | 120h | 31,500 | 31,500 |
| 26 | 1.8 | Конец проекта | milestone | 0d | 2025-07-29 17:08 | 2025-07-29 17:08 | 25 | 2025-07-29 17:08 | 2025-07-29 17:08 | 0d | 0d |  |  |  |  |  |  |  |

Notes:
- 1: Группа из 8 человек / Длительность не более 4 месяцев / Бюджет не более 620 тысяч рублей
